# MXXXXXX - Automation Project

Schedule from MS Project, 2024-06-24 to 2024-08-02.

## Calendars

- Standard: Mon-Fri 08:00-12:00, 13:00-17:00; Sat-Sun off.

## Schedule

| ID | WBS | Task | Type | Duration | Start | Finish | Predecessors | Total slack | Free slack |
| --- | --- | --- | --- | --- | --- | --- | --- | --- | --- |
| 1 | 1 | Project Kickoff |  | 1d | 2024-06-24 | 2024-06-24 |  | -4d | 0d |
| 2 | 2 | **Site Survey / Site Dicovery** |  | 3d | 2024-06-25 | 2024-06-27 | 1 | -4d | 0d |
| 3 | 2.1 | **Off Site** |  | 3d | 2024-06-25 | 2024-06-27 |  | -4d | 0d |
| 4 | 2.1.1 | Hardware Requirement |  | 2d | 2024-06-25 | 2024-06-26 |  | -3d | 0d |
| 5 | 2.1.2 | Software Requirement |  | 3d | 2024-06-25 | 2024-06-27 |  | -4d | 0d |
| 6 | 2.2 | **Site Visit** |  | 2d | 2024-06-25 | 2024-06-26 |  | -3d | 0d |
| 7 | 2.2.1 | Hardware Requirement |  | 1d | 2024-06-25 | 2024-06-25 |  | -2d | 0d |
| 8 | 2.2.2 | Software Requirement |  | 2d | 2024-06-25 | 2024-06-26 |  | -3d | 0d |
| 9 | 3 | **Project Documentation** |  | 10d? | 2024-06-24 | 2024-07-05 | 2 | 0d |  |
| 10 | 3.1 | **Process and Mechanical (P&M) Design** |  | 3d | 2024-06-24 | 2024-06-26 |  | 0d |  |
| 11 | 3.1.1 | Process Flow Diagram (PFD) | manual | 1d? | 2024-06-24 | 2024-06-24 |  |  |  |
| 12 | 3.1.2 | Process and Instrumentation Diagram (P&ID) | manual | 1d? | 2024-06-24 | 2024-06-24 |  |  |  |
| 13 | 3.1.3 | Instrument Index | manual | 1d? | 2024-06-24 | 2024-06-24 |  |  |  |
| 14 | 3.1.4 | **Review Process** |  | 3d | 2024-06-24 | 2024-06-26 |  |  |  |
| 15 | 3.1.4.1 | Review 1 | manual | 1d? | 2024-06-24 | 2024-06-24 |  |  |  |
| 16 | 3.1.4.2 | Ammend 1 | manual | 1d? | 2024-06-24 | 2024-06-24 |  |  |  |
| 17 | 3.1.5 | P&M Approval | manual | 1d? | 2024-06-24 | 2024-06-24 |  |  |  |
| 18 | 3.2 | **Automation and Control (A&C) Design** |  | 7d? | 2024-06-24 | 2024-07-02 |  | 0d |  |
| 19 | 3.2.1 | **Hardware Specifications** |  | 3d | 2024-06-28 | 2024-07-02 |  | 23d |  |
| 20 | 3.2.1.1 | Device List |  | 1d | 2024-06-28 | 2024-06-28 |  | 25d |  |
| 21 | 3.2.1.2 | IO List |  | 3d | 2024-06-28 | 2024-07-02 |  | 23d |  |
| 22 | 3.2.1.3 | Controller Specification |  | 2d | 2024-06-28 | 2024-07-01 |  | 24d |  |
| 23 | 3.2.1.4 | Network Device Layout / Topology |  | 2d | 2024-06-28 | 2024-07-01 |  | 24d |  |
| 24 | 3.2.2 | **Software Specifications** |  | 5d? | 2024-06-24 | 2024-06-28 |  | 0d |  |
| 25 | 3.2.2.1 | Control Functional Specification |  | 1d? | 2024-06-28 | 2024-06-28 |  | 25d |  |
| 26 | 3.2.2.2 | Alarm Handling |  | 1d? | 2024-06-28 | 2024-06-28 |  | 25d |  |
| 27 | 3.2.2.3 | Network Connections | manual | 1d? | 2024-06-24 | 2024-06-24 |  |  |  |

Notes:
- 11: Doc Number:

| ID | WBS | Task | Type | Duration | Start | Finish | Total slack |
| --- | --- | --- | --- | --- | --- | --- | --- |
| 28 | 3.2.3 | **Review Process** |  | 3d | 2024-06-24 | 2024-06-26 |  |
| 29 | 3.2.3.1 | Review 1 | manual | 1d? | 2024-06-24 | 2024-06-24 |  |
| 30 | 3.2.3.2 | Ammend 1 | manual | 1d? | 2024-06-24 | 2024-06-24 |  |
| 31 | 3.3 | **Electrical Deisgn** |  | 10d? | 2024-06-24 | 2024-07-05 | 0d |
| 32 | 3.3.1 | Load Calculation / Single Line | manual | 5d | 2024-06-24 | 2024-06-28 |  |
| 33 | 3.3.2 | Electrical Schematics | manual | 10d | 2024-06-24 | 2024-07-05 |  |
| 34 | 3.3.3 | Termination Drawings | manual | 5d | 2024-06-24 | 2024-06-28 |  |
| 35 | 3.3.4 | General Arrangement Drawings (GAs) | manual | 5d | 2024-06-24 | 2024-06-28 |  |
| 36 | 3.3.5 | Cable Schedule | manual | 3d | 2024-06-24 | 2024-06-26 |  |
| 37 | 3.3.6 | Cable Interconnection List | manual | 2d | 2024-06-24 | 2024-06-25 |  |
| 38 | 3.3.7 | Bill Of Materials (BOM) | manual | 2d | 2024-06-24 | 2024-06-25 |  |
| 39 | 3.3.8 | **Review Process** |  | 3d | 2024-06-24 | 2024-06-26 |  |
| 40 | 3.3.8.1 | Review 1 | manual | 1d? | 2024-06-24 | 2024-06-24 |  |
| 41 | 3.3.8.2 | Ammend 1 | manual | 1d? | 2024-06-24 | 2024-06-24 |  |
| 42 | 4 | Procurement |  | 30d | 2024-06-24 | 2024-08-02 | 0d |
| 43 | 5 | **Software Development** |  | 1d? | 2024-06-24 | 2024-06-24 | 29d |
| 44 | 5.1 | Software Reverse Engineering |  | 1d? | 2024-06-24 | 2024-06-24 | 29d |
| 45 | 5.2 | Device Block Development |  | 1d? | 2024-06-24 | 2024-06-24 | 29d |
| 46 | 5.3 | Control Block Development |  | 1d? | 2024-06-24 | 2024-06-24 | 29d |
| 47 | 5.4 | HMI Development |  | 1d? | 2024-06-24 | 2024-06-24 | 29d |
| 48 | 5.5 | HMI Integration |  | 1d? | 2024-06-24 | 2024-06-24 | 29d |
| 49 | 6 | Panel Fabrication |  | 1d? | 2024-06-24 | 2024-06-24 | 29d |
| 50 | 7 | Internal FAT | manual | 1d? | 2024-06-24 | 2024-06-24 |  |
| 51 | 8 | Client FAT | manual | 1d? | 2024-06-24 | 2024-06-24 |  |

| ID | WBS | Task | Duration | Start | Finish | Predecessors | Total slack | Free slack |
| --- | --- | --- | --- | --- | --- | --- | --- | --- |
| 52 | 9 | **Installation** | 1d? | 2024-06-24 | 2024-06-24 |  | 29d |  |
| 53 | 9.1 | Mount Panel | 1d? | 2024-06-24 | 2024-06-24 |  | 29d |  |
| 54 | 9.2 | Cable Pulling | 1d? | 2024-06-24 | 2024-06-24 |  | 29d |  |
| 55 | 9.3 | Panel Wiring | 1d? | 2024-06-24 | 2024-06-24 |  | 29d |  |
| 56 | 9.4 | Power up | 1d? | 2024-06-24 | 2024-06-24 |  | 29d |  |
| 57 | 10 | **Commissioning** | 3d? | 2024-06-24 | 2024-06-26 |  | 27d |  |
| 58 | 10.1 | Pre Commissioning | 1d? | 2024-06-24 | 2024-06-24 |  | 27d | 0d |
| 59 | 10.2 | Function Testing | 1d? | 2024-06-25 | 2024-06-25 | 58 | 27d | 0d |
| 60 | 10.3 | Site Acceptance Testing | 1d? | 2024-06-26 | 2024-06-26 | 59 | 27d |  |
